# Software_Inventory

Schedule from MS Project, 2021-12-01 to 2023-03-07, 4 hours a day, costs in $, A marks actual dates.

## Calendars

- Estándar: Mon-Fri 18:00-22:00; Sat-Sun off. Exceptions (off unless hours are given): 2021-12-18 to 2022-02-06 (Vacaciones), 2022-04-11 to 2022-04-15 (VacacionesSemanaSanta).

## Resources

| Resource | Rate |
| --- | --- |
| Santiago Forero Gómez | 4200 |
| Juan Daniel Lozano Ortiz | 4200 |
| Brandon Arley Achagua Barrios | 4200 |
| Estiven Antonio Suarez | 4200 |
| Sergio Ivan Galindo Cruz | 4200 |
| Lina Marcela Diaz Sotelo | 4200 |
| Visual Studio Code |  |
| MySQL Workbench |  |
| GitHub |  |
| Git |  |
| XAMPP |  |
| Excel |  |
| Word |  |
| Justinmind |  |
| PHPUnit |  |

## Schedule

| ID | WBS | Task | Type | Duration | Start | Finish | Predecessors | Complete | Remaining | Total slack | Free slack | Resources | Work | Actual work | Cost | Actual cost |
| --- | --- | --- | --- | --- | --- | --- | --- | --- | --- | --- | --- | --- | --- | --- | --- | --- |
| 1 | 1 | **Desarrollo Software Inventory** |  | 290d | 2021-12-01 A | 2023-03-07 |  | 17% | 241d | 0d |  |  | 1236h | 376h | 5,191,200 | 1,579,200 |
| 2 | 1.1 | **Analisis** |  | 10d | 2021-12-01 A | 2021-12-14 |  | 99% | 0d | 280d |  |  | 200h | 200h | 840,000 | 840,000 |
| 3 | 1.1.1 | Nombre |  | 1d | 2021-12-01 A | 2021-12-01 A |  | 100% |  |  |  | Brandon Arley Achagua Barrios; Estiven Antonio Suarez; Juan Daniel Lozano Ortiz; Santiago Forero Gómez; Sergio Ivan Galindo Cruz | 20h | 20h | 84,000 | 84,000 |
| 4 | 1.1.2 | Objetivo general |  | 2d | 2021-12-02 A | 2021-12-03 A | 3 | 100% |  |  |  | Estiven Antonio Suarez; Brandon Arley Achagua Barrios; Juan Daniel Lozano Ortiz; Santiago Forero Gómez; Sergio Ivan Galindo Cruz | 40h | 40h | 168,000 | 168,000 |
| 5 | 1.1.3 | Objetivos Especificos |  | 2d | 2021-12-06 A | 2021-12-07 A | 4 | 100% |  |  |  | Estiven Antonio Suarez; Brandon Arley Achagua Barrios; Juan Daniel Lozano Ortiz; Santiago Forero Gómez; Sergio Ivan Galindo Cruz | 40h | 40h | 168,000 | 168,000 |
| 6 | 1.1.4 | Planteamiento del problema |  | 2d | 2021-12-08 A | 2021-12-09 | 5 | 99% | 0d | 2d | 0d | Brandon Arley Achagua Barrios; Estiven Antonio Suarez; Juan Daniel Lozano Ortiz; Santiago Forero Gómez; Sergio Ivan Galindo Cruz; Word | 40h | 40h | 168,000 | 168,000 |
| 7 | 1.1.5 | Alcance del proyecto |  | 2d | 2021-12-10 A | 2021-12-13 | 6 | 99% | 0d | 1d | 0d | Brandon Arley Achagua Barrios; Estiven Antonio Suarez; Juan Daniel Lozano Ortiz; Santiago Forero Gómez; Sergio Ivan Galindo Cruz; Word | 40h | 40h | 168,000 | 168,000 |
| 8 | 1.1.6 | Justificación |  | 1d | 2021-12-14 A | 2021-12-14 | 7 | 99% | 0d | 280d |  | Brandon Arley Achagua Barrios; Estiven Antonio Suarez; Juan Daniel Lozano Ortiz; Santiago Forero Gómez; Sergio Ivan Galindo Cruz; Word | 20h | 20h | 84,000 | 84,000 |
| 9 | 1.1.7 | Aprobacion de proyecto | milestone | 0d | 2021-12-14 A | 2021-12-14 A | 8 | 100% |  |  |  |  |  |  |  |  |
| 10 | 1.2 | **Levantamiento de informacion** |  | 3d | 2021-12-15 A | 2021-12-17 |  | 99% | 0d | 277d |  |  | 16h | 16h | 67,200 | 67,200 |
| 11 | 1.2.1 | Entrevistas |  | 1d | 2021-12-15 A | 2021-12-15 | 9 | 99% | 0d | 1d | 0d | Brandon Arley Achagua Barrios; Word | 4h | 4h | 16,800 | 16,800 |
| 12 | 1.2.2 | Observacion |  | 1d | 2021-12-16 A | 2021-12-16 | 11 | 99% | 0d | 1d | 0d | Santiago Forero Gómez; Sergio Ivan Galindo Cruz; Word | 8h | 8h | 33,600 | 33,600 |
| 13 | 1.2.3 | Encuestas |  | 1d | 2021-12-17 A | 2021-12-17 | 12 | 99% | 0d | 277d |  | Juan Daniel Lozano Ortiz; Sergio Ivan Galindo Cruz; Santiago Forero Gómez; Word | 4h | 4h | 16,800 | 16,800 |
| 14 | 1.2.4 | Aprobacion recopilacion informacion | milestone | 0d | 2021-12-17 A | 2021-12-17 A | 13 | 100% |  |  |  |  |  |  |  |  |
| 15 | 1.3 | **Planeacion** |  | 6d | 2022-02-07 A | 2022-02-14 |  | 99% | 0d | 4d |  |  | 24h | 24h | 100,800 | 100,800 |
| 16 | 1.3.1 | Crear plan de comunicaciones para participantes y personas relacionadas con el proyecto |  | 3d | 2022-02-07 A | 2022-02-09 | 14 | 99% | 0d | 3d | 0d | Brandon Arley Achagua Barrios; Word | 12h | 12h | 50,400 | 50,400 |
| 17 | 1.3.2 | Definir plan del proyecto, hitos clave, presupuesto y participantes clave del proyecto |  | 3d | 2022-02-10 A | 2022-02-14 | 16 | 99% | 0d | 4d | 0d | Brandon Arley Achagua Barrios; Word | 12h | 12h | 50,400 | 50,400 |
| 18 | 1.4 | **Informe de Requerimientos** |  | 8d | 2022-02-15 A | 2022-02-24 |  | 99% | 0d | 4d |  |  | 32h | 32h | 134,400 | 134,400 |
| 19 | 1.4.1 | Requerimientos funcionales |  | 4d | 2022-02-15 A | 2022-02-18 | 17 | 99% | 0d | 4d | 0d | Estiven Antonio Suarez; Word | 16h | 16h | 67,200 | 67,200 |
| 20 | 1.4.2 | Requerimientos no funcionales |  | 4d | 2022-02-21 A | 2022-02-24 | 19 | 99% | 0d | 4d | 0d | Juan Daniel Lozano Ortiz; Word | 16h | 16h | 67,200 | 67,200 |
| 21 | 1.5 | **Mapa de procesos** |  | 26d | 2022-02-25 A | 2022-04-01 |  | 85% | 4d | 237d |  |  | 120h | 104h | 504,000 | 436,800 |
| 22 | 1.5.1 | BPMN |  | 4d | 2022-02-25 A | 2022-03-02 | 20 | 99% | 0d | 5d | 0d | Santiago Forero Gómez; Word | 16h | 16h | 67,200 | 67,200 |
| 23 | 1.5.2 | Diagrama de flujo de proceso |  | 4d | 2022-03-03 | 2022-03-08 | 22 |  |  | 5d | 0d | Word; Santiago Forero Gómez | 16h |  | 67,200 |  |
| 24 | 1.5.3 | **Modelo entidad relacion** |  | 18d | 2022-03-09 A | 2022-04-01 |  | 99% | 0d | 237d |  |  | 88h | 88h | 369,600 | 369,600 |
| 25 | 1.5.3.1 | MER |  | 5d | 2022-03-09 A | 2022-03-15 | 23 | 99% | 0d | 4d | 0d | Sergio Ivan Galindo Cruz; Juan Daniel Lozano Ortiz; MySQL Workbench; XAMPP | 20h | 20h | 84,000 | 84,000 |
| 26 | 1.5.3.2 | Modelo relacional |  | 4d | 2022-03-16 A | 2022-03-21 | 25 | 99% | 0d | 5d | 0d | Juan Daniel Lozano Ortiz; Sergio Ivan Galindo Cruz; MySQL Workbench; XAMPP | 32h | 32h | 134,400 | 134,400 |
| 27 | 1.5.3.3 | Esquema de tablas |  | 5d | 2022-03-22 A | 2022-03-28 | 26 | 99% | 0d | 4d | 0d | Juan Daniel Lozano Ortiz; MySQL Workbench; XAMPP | 20h | 20h | 84,000 | 84,000 |
| 28 | 1.5.3.4 | Diccionario de datos |  | 4d | 2022-03-29 A | 2022-04-01 | 27 | 99% | 0d | 237d |  | Sergio Ivan Galindo Cruz; MySQL Workbench; XAMPP | 16h | 16h | 67,200 | 67,200 |
| 29 | 1.5.4 | Aprobacion plan de desarrollo | milestone | 0d | 2022-04-01 A | 2022-04-01 A | 28 | 100% |  |  |  |  |  |  |  |  |

| ID | WBS | Task | Type | Duration | Start | Finish | Predecessors | Total slack | Resources | Work | Cost |
| --- | --- | --- | --- | --- | --- | --- | --- | --- | --- | --- | --- |
| 30 | 1.6 | **Diseño** |  | 35d | 2022-04-04 | 2022-05-27 |  | 0d |  | 140h | 588,000 |
| 31 | 1.6.1 | Casos de uso |  | 5d | 2022-04-04 | 2022-04-08 | 29 | 0d | Brandon Arley Achagua Barrios; Excel | 20h | 84,000 |
| 32 | 1.6.2 | Diseño funcional |  | 10d | 2022-04-18 | 2022-04-29 | 31 | 0d | Santiago Forero Gómez; Justinmind | 40h | 168,000 |
| 33 | 1.6.3 | Diseño tecnico |  | 10d | 2022-05-02 | 2022-05-13 | 32 | 0d | Juan Daniel Lozano Ortiz; Justinmind | 40h | 168,000 |
| 34 | 1.6.4 | Planificacion |  | 10d | 2022-05-16 | 2022-05-27 | 33 | 0d | Santiago Forero Gómez; Word | 40h | 168,000 |
| 35 | 1.6.5 | Aprobacion diseño | milestone | 0d | 2022-05-27 | 2022-05-27 | 34 | 0d |  |  |  |
| 36 | 1.7 | **Desarrollo** |  | 102d | 2022-05-30 | 2022-10-18 |  | 0d |  | 504h | 2,116,800 |
| 37 | 1.7.1 | **Ambiente de desarrollo** |  | 2d | 2022-05-30 | 2022-05-31 |  | 0d |  | 24h | 100,800 |
| 38 | 1.7.1.1 | Mockup |  | 2d | 2022-05-30 | 2022-05-31 | 35 | 0d | Juan Daniel Lozano Ortiz; Santiago Forero Gómez; Sergio Ivan Galindo Cruz; Justinmind | 24h | 100,800 |
| 39 | 1.7.2 | **Base de datos** |  | 30d | 2022-06-01 | 2022-07-12 |  | 0d |  | 160h | 672,000 |
| 40 | 1.7.2.1 | Construccion base de datos |  | 10d | 2022-06-01 | 2022-06-14 | 38 | 0d | Juan Daniel Lozano Ortiz; Sergio Ivan Galindo Cruz; MySQL Workbench; XAMPP | 80h | 336,000 |
| 41 | 1.7.2.2 | Datos insertados en la Base de datos |  | 10d | 2022-06-15 | 2022-06-28 | 40 | 0d | Sergio Ivan Galindo Cruz; MySQL Workbench; XAMPP | 40h | 168,000 |
| 42 | 1.7.2.3 | Consultas y joins en la Base de datos |  | 10d | 2022-06-29 | 2022-07-12 | 41 | 0d | Sergio Ivan Galindo Cruz; MySQL Workbench; XAMPP | 40h | 168,000 |
| 43 | 1.7.3 | **Modulo Usuario** |  | 20d | 2022-07-13 | 2022-08-09 |  | 0d |  | 80h | 336,000 |
| 44 | 1.7.3.1 | Roles |  | 10d | 2022-07-13 | 2022-07-26 | 42 | 0d | Sergio Ivan Galindo Cruz; Visual Studio Code; XAMPP | 40h | 168,000 |
| 45 | 1.7.3.2 | Metodos de autenticacion |  | 10d | 2022-07-27 | 2022-08-09 | 44 | 0d | Sergio Ivan Galindo Cruz; Visual Studio Code; XAMPP | 40h | 168,000 |
| 46 | 1.7.4 | Modulo Proveedores |  | 10d | 2022-08-10 | 2022-08-23 | 45 | 0d | Sergio Ivan Galindo Cruz; Visual Studio Code; XAMPP | 40h | 168,000 |
| 47 | 1.7.5 | **Modulo Ventas** |  | 20d | 2022-08-24 | 2022-09-20 |  | 0d |  | 80h | 336,000 |
| 48 | 1.7.5.1 | Facturacion electronica |  | 10d | 2022-08-24 | 2022-09-06 | 46 | 0d | Sergio Ivan Galindo Cruz; Visual Studio Code; XAMPP | 40h | 168,000 |
| 49 | 1.7.5.2 | Pasarela de pagos |  | 10d | 2022-09-07 | 2022-09-20 | 48 | 0d | Santiago Forero Gómez; Visual Studio Code; XAMPP | 40h | 168,000 |
| 50 | 1.7.6 | Modulo Inventario |  | 10d | 2022-09-21 | 2022-10-04 | 49 | 0d | Sergio Ivan Galindo Cruz; Juan Daniel Lozano Ortiz; Visual Studio Code; XAMPP | 80h | 336,000 |
| 51 | 1.7.7 | Modulo Clientes |  | 10d | 2022-10-05 | 2022-10-18 | 50 | 0d | Sergio Ivan Galindo Cruz; Visual Studio Code; XAMPP | 40h | 168,000 |
| 52 | 1.7.8 | Entrega preliminar | milestone | 0d | 2022-10-18 | 2022-10-18 | 51 | 0d |  |  |  |
| 53 | 1.8 | **Pruebas** |  | 35d | 2022-10-19 | 2022-12-06 |  | 0d |  | 140h | 588,000 |
| 54 | 1.8.1 | Pruebas Integrales |  | 5d | 2022-10-19 | 2022-10-25 | 52 | 0d | Juan Daniel Lozano Ortiz; PHPUnit; XAMPP | 20h | 84,000 |
| 55 | 1.8.2 | Pruebas de estrés |  | 5d | 2022-10-26 | 2022-11-01 | 54 | 0d | Juan Daniel Lozano Ortiz; PHPUnit; XAMPP | 20h | 84,000 |
| 56 | 1.8.3 | Pruebas de carga |  | 5d | 2022-11-02 | 2022-11-08 | 55 | 0d | Juan Daniel Lozano Ortiz; PHPUnit; XAMPP | 20h | 84,000 |
| 57 | 1.8.4 | Pruebas de resistencia |  | 5d | 2022-11-09 | 2022-11-15 | 56 | 0d | Juan Daniel Lozano Ortiz; PHPUnit; XAMPP | 20h | 84,000 |
| 58 | 1.8.5 | Pruebas de escalabilidad |  | 5d | 2022-11-16 | 2022-11-22 | 57 | 0d | Juan Daniel Lozano Ortiz; PHPUnit; XAMPP | 20h | 84,000 |
| 59 | 1.8.6 | Prueba de aceptacion de usuario |  | 5d | 2022-11-23 | 2022-11-29 | 58 | 0d | Juan Daniel Lozano Ortiz; PHPUnit; XAMPP | 20h | 84,000 |
| 60 | 1.8.7 | Documentar resultados de pruebas |  | 5d | 2022-11-30 | 2022-12-06 | 59 | 0d | Juan Daniel Lozano Ortiz; GitHub; Word | 20h | 84,000 |
| 61 | 1.8.8 | Resultado general de pruebas | milestone | 0d | 2022-12-06 | 2022-12-06 | 60 | 0d |  |  |  |

| ID | WBS | Task | Type | Duration | Start | Finish | Predecessors | Total slack | Resources | Work | Cost |
| --- | --- | --- | --- | --- | --- | --- | --- | --- | --- | --- | --- |
| 62 | 1.9 | **Implementar** |  | 60d | 2022-12-07 | 2023-02-28 |  | 0d |  | 60h | 252,000 |
| 63 | 1.9.1 | Actualizar documentación de control y procedimientos |  | 5d | 2022-12-07 | 2022-12-13 | 61 | 0d | Lina Marcela Diaz Sotelo; GitHub | 20h | 84,000 |
| 64 | 1.9.2 | **Construccion de manuales** |  | 10d | 2023-02-15 | 2023-02-28 |  | 0d |  | 40h | 168,000 |
| 65 | 1.9.2.1 | Usuario |  | 5d | 2023-02-15 | 2023-02-21 | 78 | 0d | Lina Marcela Diaz Sotelo; GitHub | 20h | 84,000 |
| 66 | 1.9.2.2 | Operación |  | 5d | 2023-02-22 | 2023-02-28 | 65 | 0d | Lina Marcela Diaz Sotelo; GitHub | 20h | 84,000 |
| 67 | 1.9.3 | Implementar cambios en el sistema |  | 5d | 2022-12-14 | 2022-12-20 | 63 | 0d |  |  |  |
| 68 | 1.9.4 | Supervisar resultados y mejoras |  | 5d | 2022-12-21 | 2022-12-27 | 67 | 0d |  |  |  |
| 69 | 1.9.5 | Pruebas post-produccion |  | 5d | 2022-12-28 | 2023-01-03 | 68 | 0d |  |  |  |
| 70 | 1.9.6 | Reporte de puesta en produccion |  | 5d | 2023-01-04 | 2023-01-10 | 69 | 0d |  |  |  |
| 71 | 1.9.7 | Entrega software | milestone | 0d | 2023-01-10 | 2023-01-10 | 70 | 0d |  |  |  |
| 72 | 1.10 | **Cierre** |  | 40d | 2023-01-11 | 2023-03-07 |  | 0d |  |  |  |
| 73 | 1.10.1 | Documentacion |  | 5d | 2023-01-11 | 2023-01-17 | 71 | 0d |  |  |  |
| 74 | 1.10.2 | **Confirmar diseño de control** |  | 20d | 2023-01-18 | 2023-02-14 |  | 0d |  |  |  |
| 75 | 1.10.2.1 | Identificar directivas y procedimientos |  | 5d | 2023-01-18 | 2023-01-24 | 73 | 0d |  |  |  |
| 76 | 1.10.2.2 | Revisar narraciones y diagramas de flujo |  | 5d | 2023-01-25 | 2023-01-31 | 75 | 0d |  |  |  |
| 77 | 1.10.2.3 | Revisar documentación de configuración del sistema |  | 5d | 2023-02-01 | 2023-02-07 | 76 | 0d |  |  |  |
| 78 | 1.10.2.4 | Validar puntos de control y procesos de control interno |  | 5d | 2023-02-08 | 2023-02-14 | 77 | 0d |  |  |  |
| 79 | 1.10.3 | Garantia |  | 5d | 2023-03-01 | 2023-03-07 | 66 | 0d |  |  |  |
| 80 | 1.10.4 | Acta de cierre | milestone | 0d | 2023-03-07 | 2023-03-07 | 79 | 0d |  |  |  |
